# E-SOLUTIONS

Schedule from MS Project, 2018-06-04 to 2018-11-20, costs in £.
Microsoft

## Calendars

- UK CALENDER: Mon-Fri 08:00-12:00, 13:00-17:00; Sat-Sun off. Exceptions (off unless hours are given): 2018-07-12 (Battle of The Boyn Holiday), 2018-08-06 (Summer Bank Holiday), 2018-08-27 (Summer Bank Holiday), 2018-10-31 (Halloween), 2018-11-05 (Guy Fawkes Holiday).

## Resources

| Resource | Cost per use |
| --- | --- |
| Express Shopfitters | 5750 |
| Hamdan(Materials) | 18000 |
| Electrome | 11500 |
| North East PCs | 7500 |
| Smith & Co. | 50000 |
| Carlisle Builders | 300300 |
| York Construction | 8000 |
| Hamdan | 18300 |
| Dell | 9500 |
| Dell(Software Installation) | 1800 |

## Schedule

| ID | WBS | Task | Type | Duration | Start | Finish | Predecessors | Total slack | Free slack | Constraint | Resources | Work | Cost |
| --- | --- | --- | --- | --- | --- | --- | --- | --- | --- | --- | --- | --- | --- |
| 1 | 1 | **E-SOLUTIONS** |  | 117d | 2018-06-04 | 2018-11-20 |  | 0d |  |  |  | 2480h | 456,544.8 |
| 2 | 1.1 | START PROJECT | milestone | 0d | 2018-06-04 | 2018-06-04 |  | 6d | 0d |  |  |  |  |
| 3 | 1.2 | COW Signing |  | 1d | 2018-06-04 | 2018-06-04 | 2 | 6d | 0d |  |  |  |  |
| 4 | 1.3 | Tenders Invitations and RFP release | milestone | 0d | 2018-06-04 | 2018-06-04 | 3 | 6d | 0d |  |  |  |  |
| 5 | 1.4 | Tenders and RFP bids Evaluation |  | 3d | 2018-06-05 | 2018-06-07 | 4 | 6d | 0d |  |  |  |  |
| 6 | 1.5 | Applicants Interviews |  | 3d | 2018-06-08 | 2018-06-12 | 5 | 6d | 0d |  |  |  |  |
| 7 | 1.6 | Hiring Contractors and Suppliers |  | 3d | 2018-06-13 | 2018-06-15 | 6 | 6d | 0d |  |  |  |  |
| 8 | 1.7 | **DESIGN** |  | 11d | 2018-06-18 | 2018-07-02 |  | 66d |  |  |  |  |  |
| 9 | 1.7.1 | Meeting with the architecturer |  | 1d | 2018-06-18 | 2018-06-18 | 7 | 66d | 0d |  |  |  |  |
| 10 | 1.7.2 | Architectural design |  | 1w | 2018-06-19 | 2018-06-25 | 9 | 66d | 0d |  |  |  |  |
| 11 | 1.7.3 | Analyse Architectural Design |  | 1w | 2018-06-26 | 2018-07-02 | 10, 3 | 66d | 0d |  |  |  |  |
| 12 | 1.7.4 | Finalise design | milestone | 0d | 2018-07-02 | 2018-07-02 | 11 | 66d | 0d |  |  |  |  |
| 13 | 1.8 | **WAREHOUSE CONSTRUCTION** |  | 80d | 2018-06-18 | 2018-10-10 |  | 6d |  |  |  | 640h | 350,300 |
| 14 | 1.8.1 | Mobilisation(demolition)& site clearance |  | 6w | 2018-06-18 | 2018-07-30 | 7 | 6d | 0d |  |  |  |  |
| 15 | 1.8.2 | Demolition |  | 6w | 2018-07-03 | 2018-08-15 | 12 | 66d |  |  | Smith & Co. | 240h | 50,000 |
| 16 | 1.8.3 | Mobilisation(building) |  | 5w | 2018-06-18 | 2018-07-23 | 7 | 11d | 5d |  |  |  |  |
| 17 | 1.8.4 | Building |  | 10w | 2018-07-31 | 2018-10-10 | 14, 16 | 6d | 0d |  | Carlisle Builders | 400h | 300,300 |
| 18 | 1.9 | **PROCUREMENT** |  | 30d | 2018-06-18 | 2018-07-30 |  | 36.75d |  |  |  | 920h | 48,500 |
| 19 | 1.9.1 | Procurement of office shelves |  | 3w | 2018-06-18 | 2018-07-06 | 7 | 36.75d | 0d |  | Express Shopfitters | 120h | 5,750 |
| 20 | 1.9.2 | Procurement of office fittings |  | 3w | 2018-07-03 | 2018-07-25 | 19FS-2.5% | 36.75d |  | start no earlier than 2018-06-27 | Express Shopfitters | 120h | 5,750 |
| 21 | 1.9.3 | Procurement of Network/Telecommunication Equipment |  | 6w | 2018-06-18 | 2018-07-30 | 7 | 67d | 55d |  | Hamdan(Materials) | 240h | 18,000 |
| 22 | 1.9.4 | Procurement of PC materials |  | 6w | 2018-06-18 | 2018-07-30 | 7 | 55d |  |  | Electrome | 240h | 11,500 |
| 23 | 1.9.5 | Procurement of Softwares |  | 5w | 2018-06-18 | 2018-07-23 | 7 | 75d |  |  | North East PCs | 200h | 7,500 |
| 24 | 1.10 | **SHIPPING AND INSTALLATION** |  | 107d | 2018-06-18 | 2018-11-20 |  | 0d |  |  |  | 920h | 57,744.8 |
| 25 | 1.10.1 | Mobilisation(shopfitters) |  | 2w | 2018-06-18 | 2018-06-29 | 7 | 77d | 47d |  |  |  |  |
| 26 | 1.10.2 | Shipping of office shelves |  | 7d | 2018-08-30 | 2018-09-07 | 19, 17FS-6% | 6d | 0d |  |  |  |  |
| 27 | 1.10.3 | Installation of office shelves |  | 4w | 2018-09-10 | 2018-10-05 | 25, 26 | 30d |  |  | York Construction | 280h | 11,692.4 |
| 28 | 1.10.4 | Shipping of office fittings |  | 7d | 2018-09-18 | 2018-09-26 | 26, 20 | 0d |  | start no earlier than 2018-09-18 |  |  |  |
| 29 | 1.10.5 | Installation of office fittings |  | 3w | 2018-09-27 | 2018-10-17 | 28 | 0d |  | start no earlier than 2018-08-17 | York Construction | 240h | 11,692.4 |
| 30 | 1.10.6 | Mobilisation(Net/Tell Installation) |  | 1w | 2018-06-18 | 2018-06-22 | 7 | 92d | 80d |  |  |  |  |
| 31 | 1.10.7 | Net/Tell Installation |  | 2w | 2018-10-18 | 2018-11-01 | 21, 30, 29 | 12d |  |  | Hamdan | 80h | 18,300 |
| 32 | 1.10.8 | Mobilisation(PC Installation) |  | 4w | 2018-06-18 | 2018-07-16 | 7 | 65d |  |  |  |  |  |
| 33 | 1.10.9 | Installation of PCs |  | 3w | 2018-10-18 | 2018-11-09 | 29, 22, 32 | 0d |  |  | Dell | 200h | 13,300 |
| 34 | 1.10.10 | Mobilisation(Softwares) |  | 3w | 2018-06-18 | 2018-07-06 | 7 | 85d |  |  |  |  |  |
| 35 | 1.10.11 | Software Installation |  | 1.4w | 2018-11-12 | 2018-11-20 | 23, 33, 34 | 0d |  |  | Dell(Software Installation) | 120h | 2,760 |
| 36 | 1.11 | END PROJECT | milestone | 0d | 2018-11-20 | 2018-11-20 | 27, 31, 35, 17, 15 | 0d |  | finish no earlier than 2018-10-05 |  |  |  |
